# Employee Attendance System

Schedule from MS Project, 2026-06-15 to 2026-10-09, costs in $, A marks actual dates.

## Calendars

- Standard: Mon-Fri 08:00-12:00, 13:00-17:00; Sat-Sun off.

## Resources

| Resource | Rate |
| --- | --- |
| Project Manager | 50 |
| Backend Developer | 40 |
| Frontend Developer | 35 |
| UI/UX Designer | 30 |
| QA Tester | 35 |

## Schedule

| ID | WBS | Task | Type | Duration | Start | Finish | Predecessors | Complete | Remaining | Baseline start | Baseline finish | Baseline duration | Total slack | Free slack | Constraint | Resources | Work | Actual work | Cost | Actual cost |
| --- | --- | --- | --- | --- | --- | --- | --- | --- | --- | --- | --- | --- | --- | --- | --- | --- | --- | --- | --- | --- |
| 1 | 1 | **Initiation & Planning Phase** |  | 85d | 2026-06-15 A | 2026-10-09 |  | 33% | 57.15d | 2026-06-15 | 2026-10-09 | 85d | 0d |  |  |  | 664h | 194h | 27,080 | 8,752 |
| 2 | 1.1 | Conduct Stakeholder Kick-off Meeting |  | 3d | 2026-06-15 A | 2026-06-17 |  | 99% | 0d | 2026-06-15 | 2026-06-17 | 3d | 0d |  | start no earlier than 2026-06-15 | Project Manager | 24h | 24h | 1,200 | 1,200 |
| 3 | 1.2 | Define Project Scope and Objectives |  | 2d | 2026-06-18 A | 2026-06-19 A | 2 | 100% |  | 2026-06-18 | 2026-06-19 | 2d |  |  | start no earlier than 2026-06-18 | Project Manager | 16h | 16h | 800 | 800 |
| 4 | 1.3 | Create and Sign Project Charter |  | 2d | 2026-06-22 A | 2026-06-23 A | 3 | 100% |  | 2026-06-22 | 2026-06-23 | 2d |  |  | finish no earlier than 2026-06-23 | Project Manager | 16h | 16h | 800 | 800 |
| 5 | 1.4 | Conduct Feasibility Study |  | 3d | 2026-06-24 A | 2026-06-26 A | 4 | 100% |  | 2026-06-24 | 2026-06-26 | 3d |  |  | start no earlier than 2026-06-24 | Project Manager | 24h | 24h | 1,200 | 1,200 |
| 6 | 1.5 | Gather System Requirements |  | 2d | 2026-06-29 A | 2026-06-30 A | 5 | 100% |  | 2026-06-29 | 2026-06-30 | 2d |  |  | start no earlier than 2026-06-29 | Project Manager | 16h | 16h | 800 | 800 |
| 7 | 1.6 | Write and Review SRS (Software Requirements Specification) Document |  | 2d | 2026-07-01 A | 2026-07-02 A | 6 | 100% |  | 2026-07-01 | 2026-07-02 | 2d |  |  | start no earlier than 2026-07-01 | Project Manager | 16h | 16h | 800 | 800 |
| 8 | 1.7 | SRS Sign-off / Approval | milestone | 0d | 2026-07-02 A | 2026-07-02 A | 7 | 100% |  | 2026-07-02 | 2026-07-02 |  |  |  |  | Project Manager |  |  |  |  |
| 9 | 1.8 | **System Design Phase** |  | 70d | 2026-07-06 A | 2026-10-09 |  | 17% | 58.04d | 2026-07-06 | 2026-10-09 | 70d | 0d |  |  |  | 552h | 82h | 21,480 | 3,152 |
| 10 | 1.8.1 | Design System Architecture (High-Level) |  | 3d | 2026-07-06 A | 2026-07-08 A | 7 | 100% |  | 2026-07-06 | 2026-07-08 | 3d |  |  | finish no earlier than 2026-07-08 | Backend Developer | 24h | 24h | 960 | 960 |
| 11 | 1.8.2 | Design Database Schema (ER Diagrams, Tables) |  | 1d | 2026-07-14 A | 2026-07-14 A | 10 | 100% |  | 2026-07-14 | 2026-07-14 | 1d |  |  | finish no earlier than 2026-07-14 | Backend Developer | 8h | 8h | 320 | 320 |
| 12 | 1.8.3 | Design API Endpoints and Data Flow |  | 1d | 2026-07-17 A | 2026-07-17 A | 11 | 100% |  | 2026-07-17 | 2026-07-17 | 1d |  |  | finish no earlier than 2026-07-17 | Backend Developer | 8h | 8h | 320 | 320 |
| 13 | 1.8.4 | Create UI/UX Wireframes (Admin and Employee views) |  | 1d | 2026-07-22 A | 2026-07-22 A | 12 | 100% |  | 2026-07-22 | 2026-07-22 | 1d |  |  | finish no earlier than 2026-07-22 | UI/UX Designer | 8h | 8h | 240 | 240 |
| 14 | 1.8.5 | UI/UX Prototype Approval | milestone | 0d | 2026-07-22 A | 2026-07-22 A | 13 | 100% |  | 2026-07-22 | 2026-07-22 |  |  |  |  | UI/UX Designer |  |  |  |  |
| 15 | 1.8.6 | **Development (Coding) Phase** |  | 56d | 2026-07-24 A | 2026-10-09 |  | 8% | 51.59d | 2026-07-24 | 2026-10-09 | 56d | 0d |  |  |  | 504h | 34h | 19,640 | 1,312 |
| 16 | 1.8.6.1 | **Backend Development** |  | 6d | 2026-07-24 A | 2026-07-31 |  | 50% | 3d | 2026-07-24 | 2026-07-31 | 6d | 50d |  |  |  | 32h | 16h | 1,280 | 640 |
| 17 | 1.8.6.1.1 | Setup Database and Server Environment |  | 3d | 2026-07-24 A | 2026-07-28 | 13 | 50% | 1.5d | 2026-07-24 | 2026-07-28 | 3d | 2.5d | 2d | finish no earlier than 2026-07-28 | Backend Developer | 24h | 12h | 960 | 480 |
| 18 | 1.8.6.1.2 | Develop REST APIs (Authentication, Attendance Logging, Reports) |  | 1d | 2026-07-31 A | 2026-07-31 | 17 | 50% | 0.5d | 2026-07-31 | 2026-07-31 | 1d | 0.6d | 0d | finish no earlier than 2026-07-31 | Backend Developer | 8h | 4h | 320 | 160 |
| 19 | 1.8.6.1.3 | Backend APIs Ready | milestone | 0d | 2026-07-31 | 2026-07-31 | 18 |  |  | 2026-07-31 | 2026-07-31 |  | 50d |  | start no earlier than 2026-07-31 | Backend Developer |  |  |  |  |
| 20 | 1.8.6.2 | **Frontend Development** |  | 6d | 2026-08-03 A | 2026-08-10 |  | 20% | 4.8d | 2026-08-03 | 2026-08-10 | 6d | 44d |  |  |  | 48h | 9.6h | 1,680 | 336 |
| 21 | 1.8.6.2.1 | Build Admin Dashboard (Monitor logs, manage employees) |  | 3d | 2026-08-03 A | 2026-08-05 | 18 | 20% | 2.4d | 2026-08-03 | 2026-08-05 | 3d | 0.6d | 0d | finish no earlier than 2026-08-05 | Frontend Developer | 24h | 4.8h | 840 | 168 |
| 22 | 1.8.6.2.2 | Build Employee Portal (View own attendance, apply leaves) |  | 3d | 2026-08-06 A | 2026-08-10 | 21 | 20% | 2.4d | 2026-08-06 | 2026-08-10 | 3d | 0.6d | 0d | start no earlier than 2026-08-06 | Frontend Developer | 24h | 4.8h | 840 | 168 |
| 23 | 1.8.6.2.3 | Frontend UI/Dashboard Ready | milestone | 0d | 2026-08-10 | 2026-08-10 | 22 |  |  | 2026-08-10 | 2026-08-10 |  | 44d |  |  | Frontend Developer |  |  |  |  |
| 24 | 1.8.6.3 | **Hardware Integration** |  | 44d | 2026-08-11 A | 2026-10-09 |  | 2% | 42.95d | 2026-08-11 | 2026-10-09 | 44d | 0d |  |  |  | 424h | 8.4h | 16,680 | 336 |
| 25 | 1.8.6.3.1 | Connect Biometric / RFID / Facial Recognition SDK |  | 4d | 2026-08-11 A | 2026-08-14 | 22 | 15% | 3.4d | 2026-08-11 | 2026-08-14 | 4d | 0.45d | 0d | start no earlier than 2026-08-11 | Backend Developer | 32h | 4.8h | 1,280 | 192 |
| 26 | 1.8.6.3.2 | Test real-time data sync from device to database |  | 3d | 2026-08-17 A | 2026-08-19 | 25 | 15% | 2.55d | 2026-08-17 | 2026-08-19 | 3d | 0d |  | start no earlier than 2026-08-17 | Backend Developer | 24h | 3.6h | 960 | 144 |
| 27 | 1.8.6.3.3 | System Integration & Coding Phase Complete | milestone | 0d | 2026-08-19 | 2026-08-19 | 26 |  |  | 2026-08-19 | 2026-08-19 |  | 37d |  |  | Backend Developer |  |  |  |  |

| ID | WBS | Task | Type | Duration | Start | Finish | Predecessors | Baseline start | Baseline finish | Baseline duration | Total slack | Constraint | Resources | Work | Cost |
| --- | --- | --- | --- | --- | --- | --- | --- | --- | --- | --- | --- | --- | --- | --- | --- |
| 28 | 1.8.6.3.4 | **Testing & Quality Assurance (QA) Phase** |  | 37d | 2026-08-20 | 2026-10-09 |  | 2026-08-20 | 2026-10-09 | 37d | 0d |  |  | 368h | 14,440 |
| 29 | 1.8.6.3.4.1 | Write and Execute Unit Test Cases |  | 2d | 2026-08-20 | 2026-08-21 | 26 | 2026-08-20 | 2026-08-21 | 2d | 0d | finish no earlier than 2026-08-21 | QA Tester | 16h | 560 |
| 30 | 1.8.6.3.4.2 | Integration Testing (Frontend + Backend + Hardware) |  | 3d | 2026-08-24 | 2026-08-26 | 29 | 2026-08-24 | 2026-08-26 | 3d | 0d | start no earlier than 2026-08-24 | QA Tester | 24h | 840 |
| 31 | 1.8.6.3.4.3 | Security and Penetration Testing (Data encryption check) |  | 3d | 2026-08-27 | 2026-08-31 | 30 | 2026-08-27 | 2026-08-31 | 3d | 0d | start no earlier than 2026-08-27 | QA Tester | 24h | 840 |
| 32 | 1.8.6.3.4.4 | Load and Performance Testing (Handling peak clock-in hours) |  | 4d | 2026-09-01 | 2026-09-04 | 31 | 2026-09-01 | 2026-09-04 | 4d | 0d | start no earlier than 2026-09-01 | QA Tester | 32h | 1,120 |
| 33 | 1.8.6.3.4.5 | User Acceptance Testing (UAT) with Client/Teacher |  | 3d | 2026-09-07 | 2026-09-09 | 32 | 2026-09-07 | 2026-09-09 | 3d | 0d | start no earlier than 2026-09-07 | QA Tester | 24h | 840 |
| 34 | 1.8.6.3.4.6 | Bug Fixing and Code Optimization |  | 3d | 2026-09-10 | 2026-09-14 | 33 | 2026-09-10 | 2026-09-14 | 3d | 0d | start no earlier than 2026-09-10 | QA Tester | 24h | 840 |
| 35 | 1.8.6.3.4.7 | UAT Approved & Sign-off | milestone | 0d | 2026-09-14 | 2026-09-14 | 34 | 2026-09-14 | 2026-09-14 |  | 19d |  | QA Tester |  |  |
| 36 | 1.8.6.3.4.8 | **Deployment & Training Phase** |  | 19d | 2026-09-15 | 2026-10-09 |  | 2026-09-15 | 2026-10-09 | 19d | 0d |  |  | 224h | 9,400 |
| 37 | 1.8.6.3.4.8.1 | Setup Production Server and Hosting |  | 3d | 2026-09-15 | 2026-09-17 | 34 | 2026-09-15 | 2026-09-17 | 3d | 0d | finish no earlier than 2026-09-17 | Backend Developer; Frontend Developer | 48h | 1,800 |
| 38 | 1.8.6.3.4.8.2 | Deploy Database and Application |  | 3d | 2026-09-18 | 2026-09-22 | 37 | 2026-09-18 | 2026-09-22 | 3d | 0d | start no earlier than 2026-09-18 | Backend Developer; Frontend Developer | 48h | 1,800 |
| 39 | 1.8.6.3.4.8.3 | Enroll Employee Biometric Data (Fingerprints/Faces) |  | 3d | 2026-09-23 | 2026-09-25 | 38 | 2026-09-23 | 2026-09-25 | 3d | 0d |  | Backend Developer; Frontend Developer | 48h | 1,800 |
| 40 | 1.8.6.3.4.8.4 | Conduct User Training Sessions (For HR / Admin staff) |  | 3d | 2026-09-28 | 2026-09-30 | 39 | 2026-09-28 | 2026-09-30 | 3d | 0d | finish no earlier than 2026-09-30 | Project Manager | 24h | 1,200 |
| 41 | 1.8.6.3.4.8.5 | Write User Manual and Technical Documentation |  | 3d | 2026-10-01 | 2026-10-05 | 40 | 2026-10-01 | 2026-10-05 | 3d | 0d | start no earlier than 2026-10-01 | Project Manager | 24h | 1,200 |
| 42 | 1.8.6.3.4.8.6 | Go-Live / System Launch | milestone | 0d | 2026-10-05 | 2026-10-05 | 41 | 2026-10-05 | 2026-10-05 |  | 4d |  |  |  |  |
| 43 | 1.8.6.3.4.8.7 | **Project Closure Phase** |  | 4d | 2026-10-06 | 2026-10-09 |  | 2026-10-06 | 2026-10-09 | 4d | 0d |  |  | 32h | 1,600 |
| 44 | 1.8.6.3.4.8.7.1 | Final System Handover |  | 2d | 2026-10-06 | 2026-10-07 | 41 | 2026-10-06 | 2026-10-07 | 2d | 0d | finish no earlier than 2026-10-07 | Project Manager | 16h | 800 |
| 45 | 1.8.6.3.4.8.7.2 | Project Evaluation and Review |  | 2d | 2026-10-08 | 2026-10-09 | 44 | 2026-10-08 | 2026-10-09 | 2d | 0d | start no earlier than 2026-10-08 | Project Manager | 16h | 800 |
| 46 | 1.8.6.3.4.8.7.3 | Client Sign-off and Project Closure Report Submission | milestone | 0d | 2026-10-09 | 2026-10-09 | 45 | 2026-10-09 | 2026-10-09 |  | 0d |  | Project Manager |  |  |
